# WBS-Ticketing

Schedule from MS Project, 2023-10-16 to 2024-08-09, costs in €.

## Calendars

- Standard: Mon-Fri 09:00-13:00, 14:00-18:00; Sat-Sun off.

## Resources

| Resource | Rate |
| --- | --- |
| Progect Manager | 25 |
| Program Manager | 20 |
| Sviluppatore 1 | 15 |
| Sviluppatore 2 | 15 |
| Tester | 15 |

## Schedule

| ID | WBS | Task | Type | Duration | Start | Finish | Predecessors | Total slack | Free slack | Resources | Work | Cost |
| --- | --- | --- | --- | --- | --- | --- | --- | --- | --- | --- | --- | --- |
| 1 | 1 | **1. Sviluppo servizio di ticketing** |  | 215d | 2023-10-16 | 2024-08-09 |  | 0d |  |  | 2080h | 33,320 |
| 2 | 1.1 | **1.1 Definizione dei requisiti** |  | 42d | 2023-10-16 | 2023-12-12 |  | 0d |  |  | 440h | 7,920 |
| 3 | 1.1.1 | 1.1.1 Colloquio con il cliente per definire i requisiti | manual | 1d | 2023-10-16 | 2023-10-16 |  |  |  | Progect Manager; Program Manager; Sviluppatore 1; Sviluppatore 2; Tester | 40h | 720 |
| 4 | 1.1.2 | 1.1.2 Studio di fattibilità | manual | 1d | 2023-10-17 | 2023-10-17 | 3 |  |  | Progect Manager; Program Manager; Sviluppatore 1; Sviluppatore 2; Tester | 40h | 720 |
| 5 | 1.1.3 | 1.1.3 Analisi dei rischi | manual | 1d | 2023-10-18 | 2023-10-18 | 4 |  |  | Progect Manager; Program Manager; Sviluppatore 1; Sviluppatore 2; Tester | 40h | 720 |
| 6 | 1.1.4 | 1.1.4 Definizione Poject Charter | manual | 1d | 2023-10-24 | 2023-10-24 |  |  |  | Progect Manager; Program Manager; Sviluppatore 1; Sviluppatore 2; Tester | 40h | 720 |
| 7 | 1.1.5 | 1.1.5 Analisi dei requisiti | manual | 1d | 2023-10-27 | 2023-10-27 |  |  |  | Progect Manager; Program Manager; Sviluppatore 1; Sviluppatore 2; Tester | 40h | 720 |
| 8 | 1.1.6 | 1.1.6 Creazione brief di progetto | manual | 1d | 2023-10-30 | 2023-10-30 | 4, 5, 6, 7 |  |  | Progect Manager; Program Manager; Sviluppatore 1; Sviluppatore 2; Tester | 40h | 720 |
| 9 | 1.1.7 | 1.1.7 Creazione WBS | manual | 1d | 2023-11-07 | 2023-11-07 |  |  |  | Progect Manager; Program Manager; Sviluppatore 1; Sviluppatore 2; Tester | 40h | 720 |
| 10 | 1.1.8 | 1.1.8 Creazione GANTT | manual | 1d | 2023-11-10 | 2023-11-10 |  |  |  | Progect Manager; Program Manager; Sviluppatore 1; Sviluppatore 2; Tester | 40h | 720 |
| 11 | 1.1.9 | 1.1.9 Creazione CBS | manual | 1d | 2023-11-14 | 2023-11-14 |  |  |  | Progect Manager; Program Manager; Sviluppatore 1; Sviluppatore 2; Tester | 40h | 720 |
| 12 | 1.1.10 | 1.1.10 Creazione RAM | manual | 1d | 2023-11-17 | 2023-11-17 |  |  |  | Progect Manager; Program Manager; Sviluppatore 1; Sviluppatore 2; Tester | 40h | 720 |
| 13 | 1.1.11 | 1.1.11 Incontro con il cliente per controllo attività | manual | 1d | 2023-12-12 | 2023-12-12 | 4, 5, 6, 7, 8, 9, 10, 11, 12 |  |  | Progect Manager; Program Manager; Sviluppatore 1; Sviluppatore 2; Tester | 40h | 720 |
| 14 | 1.2 | **1.2 Sviluppo del back-end** |  | 40d | 2024-01-15 | 2024-03-08 |  | 0d |  |  | 360h | 5,600 |
| 15 | 1.2.1 | 1.2.1 Progettazione architettura del sistema |  | 10d | 2024-01-15 | 2024-01-26 |  | 0d |  | Program Manager [50%]; Sviluppatore 1 | 120h | 2,000 |
| 16 | 1.2.2 | 1.2.2 Creazione database |  | 15d | 2024-01-29 | 2024-02-16 | 15 | 0d |  | Sviluppatore 1 | 120h | 1,800 |
| 17 | 1.2.3 | 1.2.3 Implementazione delle funzionalità richieste |  | 15d | 2024-02-19 | 2024-03-08 | 16 | 0d |  | Sviluppatore 1 | 120h | 1,800 |
| 18 | 1.3 | **1.3 Sviluppo del front-end** |  | 35d | 2024-01-15 | 2024-03-01 | 2 |  |  |  | 320h | 5,000 |
| 19 | 1.3.1 | 1.3.1 Progettazione interfaccia utente |  | 10d | 2024-01-15 | 2024-01-26 |  | 5d | 0d | Sviluppatore 2; Program Manager [50%] | 120h | 2,000 |
| 20 | 1.3.2 | 1.3.2 Sviluppo interfaccia utente |  | 15d | 2024-01-29 | 2024-02-16 | 19 | 5d | 0d | Sviluppatore 2 | 120h | 1,800 |
| 21 | 1.3.3 | 1.3.3 Migliorie stile interfaccia |  | 10d | 2024-02-19 | 2024-03-01 | 20 | 5d |  | Sviluppatore 2 | 80h | 1,200 |
| 22 | 1.4 | **1.4 Implementazione del sistema** |  | 16d | 2024-03-11 | 2024-04-01 | 14, 18 | 0d |  |  | 288h | 4,520 |
| 23 | 1.4.1 | 1.4.1 Unione del back-end con il front-end |  | 5d | 2024-03-11 | 2024-03-15 |  | 0d |  | Sviluppatore 1; Sviluppatore 2; Program Manager | 120h | 2,000 |
| 24 | 1.4.2 | 1.4.2 Configuirazione servizi di ticketing |  | 10d | 2024-03-18 | 2024-03-29 | 23 | 0d |  | Sviluppatore 1; Sviluppatore 2 | 160h | 2,400 |
| 25 | 1.4.3 | 1.4.3 Test di sistema |  | 1d | 2024-04-01 | 2024-04-01 | 24 | 0d |  | Tester | 8h | 120 |

| ID | WBS | Task | Duration | Start | Finish | Predecessors | Total slack | Free slack | Constraint | Resources | Work | Cost |
| --- | --- | --- | --- | --- | --- | --- | --- | --- | --- | --- | --- | --- |
| 26 | 1.5 | **1.5 Documentazione** | 86d | 2024-04-02 | 2024-07-30 | 22 | 0d |  |  |  | 512h | 7,680 |
| 27 | 1.5.1 | 1.5.1 Creazione documentazione del progetto | 12d | 2024-04-02 | 2024-07-09 |  | 0d |  | start no earlier than 2024-01-08 | Sviluppatore 1; Sviluppatore 2 | 192h | 2,880 |
| 28 | 1.5.2 | 1.5.2 Creazione manuale utente | 15d | 2024-07-10 | 2024-07-30 | 27 | 0d |  |  | Sviluppatore 1; Sviluppatore 2 | 240h | 3,600 |
| 29 | 1.5.3 | 1.5.3 Testing dell'usabilità | 5d | 2024-04-02 | 2024-04-08 |  | 76d | 0d |  | Tester | 40h | 600 |
| 30 | 1.5.4 | 1.5.4 Test di compatibilità con dispositivi | 5d | 2024-04-09 | 2024-04-15 | 29 | 76d |  |  | Tester | 40h | 600 |
| 31 | 1.6 | **1.6 Implementazione e lancio** | 8d | 2024-07-31 | 2024-08-09 | 26 | 0d |  |  |  | 160h | 2,600 |
| 32 | 1.6.1 | 1.6.1 Incontro con il cliente per controllo progetto finale | 1d | 2024-07-31 | 2024-07-31 |  | 0d |  |  | Progect Manager; Program Manager | 16h | 360 |
| 33 | 1.6.2 | 1.6.2 Eventuali correzioni | 5d | 2024-08-01 | 2024-08-07 | 32 | 0d |  |  | Sviluppatore 1; Sviluppatore 2 | 80h | 1,200 |
| 34 | 1.6.3 | 1.6.3 Preparazione per il rilascio | 2d | 2024-08-08 | 2024-08-09 | 33 | 0d |  |  | Program Manager; Sviluppatore 1; Sviluppatore 2; Tester | 64h | 1,040 |
